# 软件开发

Schedule from MS Project, 2018-09-27 to 2018-12-21, costs in ￥, A marks actual dates.

## Calendars

- 标准: Mon-Fri 08:00-12:00, 13:00-17:00; Sat-Sun off.

## Resources

| Resource | Rate |
| --- | --- |
| 黄家豪 | 65 |
| 谢烨斌 | 65 |
| 黄彬彬 | 65 |
| 何志城 | 65 |
| 黄柏儒 | 65 |
| 谷明政 | 65 |

## Schedule

| ID | WBS | Task | Type | Duration | Start | Finish | Predecessors | Complete | Remaining | Baseline start | Baseline finish | Baseline duration | Total slack | Free slack | Constraint | Deadline | Resources | Work | Actual work | Cost | Baseline cost | Actual cost |
| --- | --- | --- | --- | --- | --- | --- | --- | --- | --- | --- | --- | --- | --- | --- | --- | --- | --- | --- | --- | --- | --- | --- |
| 1 | 1 | **启动** |  | 15.5d? | 2018-09-27 A | 2018-10-18 A |  | 100% |  | 2018-09-26 | 2018-10-18 | 16.5d? |  |  |  |  |  | 12h | 12h | 780 | 780 | 780 |
| 2 | 1.1 | 可行性分析 |  | 0.5d? | 2018-09-27 A | 2018-09-27 A |  | 100% |  | 2018-09-26 | 2018-09-26 | 0.5d? |  |  |  |  | 黄彬彬; 谷明政; 何志城; 黄柏儒; 黄家豪; 谢烨斌 | 4h | 4h | 260 | 260 | 260 |
| 3 | 1.2 | 项目干系人 |  | 0.5d? | 2018-09-27 A | 2018-09-27 A | 2 | 100% |  | 2018-09-27 | 2018-09-27 | 0.5d? |  |  |  |  | 何志城; 黄柏儒 | 4h | 4h | 260 | 260 | 260 |
| 4 | 1.3 | 制订项目章程 |  | 0.5d? | 2018-10-18 A | 2018-10-18 A | 3 | 100% |  | 2018-10-10 | 2018-10-11 | 0.5d? |  |  |  |  | 谷明政; 谢烨斌 | 4h | 4h | 260 | 260 | 260 |
| 5 | 2 | **计划** |  | 7.25d? | 2018-09-27 A | 2018-10-08 | 1FS-15d | 99% | 0d? | 2018-09-27 | 2018-10-02 | 3.5d? | 0d |  |  |  |  | 50h | 50h | 2,990 | 3,185 | 2,990 |
| 6 | 2.1 | **项目范围计划** |  | 7d | 2018-09-27 A | 2018-10-07 A | 4FS-15d | 100% |  | 2018-09-27 | 2018-10-02 | 3.5d |  |  |  |  |  | 32h | 32h | 2,080 | 1,560 | 2,080 |
| 7 | 2.1.1 | 分析项目范围、目标描述 |  | 4h | 2018-09-27 A | 2018-09-27 A |  | 100% |  | 2018-09-27 | 2018-09-27 | 4h |  |  |  | 2018-09-27 | 黄彬彬; 何志城; 谷明政 | 12h | 12h | 780 | 780 | 780 |
| 8 | 2.1.2 | 定义预备资源 |  | 0.5d | 2018-09-27 A | 2018-09-27 A | 7 | 100% |  | 2018-09-28 | 2018-09-28 | 0.5d |  |  |  |  | 何志城; 谷明政 | 8h | 8h | 520 | 520 | 520 |
| 9 | 2.1.3 | 获得核心资源 |  | 0.5d | 2018-09-27 A | 2018-09-27 A | 8 | 100% |  | 2018-09-28 | 2018-09-28 | 0.5d |  |  |  |  | 谷明政 | 4h | 4h | 260 | 260 | 260 |
| 10 | 2.1.4 | 确定项目范围规划 | milestone | 1d | 2018-10-05 A | 2018-10-07 A | 9 | 100% |  | 2018-09-27 | 2018-10-02 | 3d |  |  |  |  | 黄彬彬 | 8h | 8h | 520 |  | 520 |
| 11 | 2.2 | 工作分解结构（WBS） | manual | 1d | 2018-09-28 A | 2018-09-28 A | 10 | 100% |  | 2018-09-30 | 2018-09-30 | 1d? |  |  |  |  | 谢烨斌 | 8h | 8h | 520 | 520 | 520 |
| 12 | 2.3 | **项目时间表计划** |  | 6.25d? | 2018-09-28 A | 2018-10-08 | 6 | 99% | 0d? | 2018-09-28 | 2018-09-30 | 1d? | 0d |  |  |  |  | 8h | 8h | 260 | 1,040 | 260 |
| 13 | 2.3.1 | 活动资源估算 |  | 4h? | 2018-09-28 A | 2018-10-08 A |  | 100% |  | 2018-10-04 | 2018-10-04 | 2h? |  |  |  |  | 谢烨斌 | 4h | 4h | 260 | 130 | 260 |
| 14 | 2.3.2 | 活动工期估算 | milestone | 0d | 2018-09-29 A | 2018-10-08 | 13FF | 99% | 0d | 2018-10-04 | 2018-10-04 | 0.25d? | -5.25d | 0d | finish no earlier than 2018-09-30 |  | 谢烨斌 |  |  |  | 130 |  |
| 15 | 2.3.3 | 制订进度计划 |  | 0.5d | 2018-09-30 A | 2018-09-30 A | 14 | 100% |  | 2018-10-04 | 2018-10-05 | 0.5d? |  |  |  |  | 谢烨斌 | 4h | 4h |  | 260 |  |
| 16 | 2.4 | 项目成本计划 |  | 0.25d? | 2018-10-02 A | 2018-10-08 A | 12FF | 100% |  | 2018-10-04 | 2018-10-05 | 0.12d? |  |  |  |  | 谢烨斌 | 2h | 2h | 130 | 65 | 130 |
| 17 | 3 | **执行** |  | 62d? | 2018-09-27 A | 2018-12-21 | 5 | 99% | 0.69d? | 2018-09-27 | 2018-11-30 | 46.9d? | 0d |  |  |  |  | 2808h | 2734h | 176,280 | 102,934 | 171,470 |
| 18 | 3.1 | **需求分析调研** |  | 15.5d? | 2018-09-27 A | 2018-10-18 | 16 | 99% | 0d? | 2018-09-27 | 2018-10-16 | 14d? | 0d |  |  |  |  | 300h | 250h | 16,900 | 23,140 | 13,650 |
| 19 | 3.1.1 | 行为需求分析 |  | 1d | 2018-09-27 A | 2018-09-27 A |  | 100% |  | 2018-09-27 | 2018-09-30 | 1d |  |  |  |  | 谷明政; 黄彬彬; 何志城 | 24h | 24h | 1,560 | 3,120 | 1,560 |
| 20 | 3.1.2 | **起草初步的需求文档** |  | 6.75d | 2018-09-28 A | 2018-10-08 A | 19 | 100% |  | 2018-09-28 | 2018-10-03 | 4d? |  |  |  |  | 黄彬彬 | 86h | 86h | 5,070 | 14,820 | 5,070 |
| 21 | 3.1.2.1 | 认证用户功能分析 |  | 1d | 2018-09-28 A | 2018-10-08 A |  | 100% |  | 2018-09-28 | 2018-10-05 | 0.5d? |  |  |  |  | 黄家豪 | 8h | 8h | 520 | 260 | 520 |
| 22 | 3.1.2.2 | 管理小组功能分析 |  | 1d | 2018-09-30 A | 2018-09-30 A | 21SS | 100% |  | 2018-09-28 | 2018-10-05 | 1d? |  |  |  |  | 黄柏儒 | 8h | 8h |  | 520 |  |
| 23 | 3.1.2.3 | 处理聊天功能分析 |  | 1d | 2018-10-01 A | 2018-10-01 A | 21SS | 100% |  | 2018-09-28 | 2018-10-05 | 1d? |  |  |  |  | 黄彬彬 | 8h | 8h | 520 | 520 | 520 |
| 24 | 3.1.2.4 | 日程管理功能分析 |  | 1d | 2018-10-03 A | 2018-10-03 A | 21SS | 100% |  | 2018-09-28 | 2018-10-05 | 1d? |  |  |  |  | 谷明政 | 8h | 8h | 520 | 520 | 520 |
| 25 | 3.1.3 | 功能性需求确认 | milestone | 1d? | 2018-10-04 A | 2018-10-04 A | 20 | 100% |  | 2018-09-28 | 2018-10-05 | 1d? |  |  |  |  | 谷明政; 何志城; 黄柏儒; 黄彬彬; 黄家豪; 谢烨斌 | 48h | 48h | 3,120 |  | 3,120 |

| ID | WBS | Task | Type | Duration | Start | Finish | Predecessors | Complete | Remaining | Baseline start | Baseline finish | Baseline duration | Total slack | Constraint | Resources | Work | Actual work | Cost | Baseline cost | Actual cost |
| --- | --- | --- | --- | --- | --- | --- | --- | --- | --- | --- | --- | --- | --- | --- | --- | --- | --- | --- | --- | --- |
| 26 | 3.1.4 | **原型开发** |  | 7.25d | 2018-09-28 A | 2018-10-09 | 25 | 99% | 0d | 2018-09-30 | 2018-10-05 | 5d? | 0d |  | 黄家豪 | 106h | 56h | 4,810 | 2,600 | 1,560 |
| 27 | 3.1.4.1 | 认证用户原型设计 | manual | 1d | 2018-09-30 A | 2018-09-30 A |  | 100% |  | 2018-10-02 | 2018-10-07 | 1d? |  |  | 黄家豪 | 8h | 8h |  | 520 |  |
| 28 | 3.1.4.2 | 管理小组原型设计 |  | 1d | 2018-09-30 A | 2018-10-01 A | 27SS | 100% |  | 2018-10-02 | 2018-10-07 | 1d |  |  | 黄柏儒 | 8h | 8h |  | 520 |  |
| 29 | 3.1.4.3 | 处理聊天原型设计 |  | 2d | 2018-09-28 A | 2018-10-09 A | 28 | 100% |  | 2018-10-02 | 2018-10-07 | 1d |  |  | 黄彬彬 | 16h | 16h | 1,040 | 520 | 1,040 |
| 30 | 3.1.4.4 | 日程管理原型设计 |  | 2d | 2018-10-05 A | 2018-10-08 A | 27SS | 100% |  | 2018-10-02 | 2018-10-07 | 1d? |  |  | 谷明政 | 16h | 16h |  | 520 |  |
| 31 | 3.1.5 | 非功能性需求分析 |  | 1d | 2018-10-14 A | 2018-10-14 A | 26 | 100% |  | 2018-10-08 | 2018-10-08 | 1d? |  |  | 黄柏儒; 黄彬彬; 谢烨斌 | 8h | 8h | 520 | 520 | 520 |
| 32 | 3.1.6 | 审阅需求文档 |  | 4h? | 2018-10-15 A | 2018-10-15 A | 25, 31 | 100% |  | 2018-10-09 | 2018-10-09 | 1d? |  |  | 谢烨斌 | 4h | 4h | 260 | 520 | 260 |
| 33 | 3.1.7 | 根据反馈修改需求文档 |  | 2d | 2018-10-15 A | 2018-10-16 A | 32SS | 100% |  | 2018-10-09 | 2018-10-10 | 2d |  |  | 黄柏儒 | 16h | 16h | 1,040 | 1,040 | 1,040 |
| 34 | 3.1.8 | 确定交付期限 |  | 0.5d | 2018-10-16 A | 2018-10-16 A | 33 | 100% |  | 2018-10-16 | 2018-10-16 | 0.5d |  | finish no earlier than 2018-10-16 | 谷明政 | 4h | 4h | 260 | 260 | 260 |
| 35 | 3.1.9 | 获得所需资源 |  | 0.5d | 2018-10-18 A | 2018-10-18 A | 33 | 100% |  | 2018-10-11 | 2018-10-11 | 0.5d |  |  | 黄家豪 | 4h | 4h | 260 | 260 | 260 |
| 36 | 3.1.10 | 需求分析完成 | milestone | 0d | 2018-10-18 A | 2018-10-18 A | 35 | 100% |  | 2018-10-11 | 2018-10-11 | 0d |  |  |  |  |  |  |  |  |
| 37 | 3.2 | **设计** |  | 15d? | 2018-10-21 A | 2018-11-09 | 18FS+1d | 99% | 0d? | 2018-10-18 | 2018-11-06 | 14d? | 30d |  |  | 415h | 415h | 23,335 | 12,714 | 23,335 |
| 38 | 3.2.1 | **概要设计** |  | 6d? | 2018-10-21 A | 2018-10-29 A | 36FS+1d | 100% |  | 2018-10-18 | 2018-10-26 | 7d? |  |  |  | 279h | 279h | 14,495 | 6,240 | 14,495 |
| 39 | 3.2.1.1 | **系统结构设计** |  | 1d? | 2018-10-21 A | 2018-10-22 A | 36 | 100% |  | 2018-10-18 | 2018-10-18 | 1d? |  |  |  | 24h | 24h | 1,040 | 1,040 | 1,040 |
| 40 | 3.2.1.1.1 | 系统逻辑架构设计 | manual | 4h | 2018-10-21 A | 2018-10-21 A |  | 100% |  | 2018-10-18 | 2018-10-18 | 1d? |  |  | 黄彬彬; 谢烨斌 | 8h | 8h |  | 520 |  |
| 41 | 3.2.1.1.2 | 系统物理架构设计 |  | 8h? | 2018-10-22 A | 2018-10-22 A | 40SS | 100% |  | 2018-10-18 | 2018-10-18 | 1d? |  |  | 黄彬彬; 谢烨斌 | 16h | 16h | 1,040 | 520 | 1,040 |
| 42 | 3.2.1.2 | **系统数据模型** |  | 4d? | 2018-10-21 A | 2018-10-25 A | 39SS | 100% |  | 2018-10-18 | 2018-10-23 | 3.5d? |  |  |  | 144h | 144h | 6,240 | 3,120 | 6,240 |
| 43 | 3.2.1.2.1 | E-R模型设计 |  | 2d? | 2018-10-22 A | 2018-10-23 A |  | 100% |  | 2018-10-18 | 2018-10-18 | 0.5d? |  |  | 黄家豪 | 16h | 16h | 1,040 | 260 | 1,040 |
| 44 | 3.2.1.2.2 | 数据字典 |  | 2d? | 2018-10-23 A | 2018-10-24 A | 43 | 100% |  | 2018-10-18 | 2018-10-18 | 0.5d? |  |  | 黄家豪 | 16h | 16h | 1,040 | 260 | 1,040 |
| 45 | 3.2.1.2.3 | 数据库设计 |  | 2d? | 2018-10-23 A | 2018-10-25 A | 44 | 100% |  | 2018-10-19 | 2018-10-19 | 1d? |  |  | 黄彬彬; 黄家豪 | 32h | 32h | 2,080 | 520 | 2,080 |
| 46 | 3.2.1.2.4 | 系统接口设计 | manual | 1d | 2018-10-21 A | 2018-10-21 A | 43 | 100% |  | 2018-10-18 | 2018-10-18 | 0.5d? |  |  | 黄彬彬; 黄家豪 | 16h | 16h |  | 260 |  |
| 47 | 3.2.1.2.5 | 完善原型 | manual | 4d | 2018-10-21 A | 2018-10-24 A | 18 | 100% |  | 2018-10-18 | 2018-10-22 | 3d |  |  | 黄家豪 | 32h | 32h |  | 1,560 |  |
| 48 | 3.2.1.2.6 | 用户界面设计 |  | 2d? | 2018-10-23 A | 2018-10-25 A | 47 | 100% |  | 2018-10-23 | 2018-10-23 | 0.5d? |  |  | 何志城; 黄家豪 | 32h | 32h | 2,080 | 260 | 2,080 |
| 49 | 3.2.1.3 | **非功能性设计** |  | 3d? | 2018-10-23 A | 2018-10-25 A | 42, 39 | 100% |  | 2018-10-23 | 2018-10-24 | 1.5d? |  |  |  | 3h | 3h | 195 | 1,300 | 195 |
| 50 | 3.2.1.3.1 | 性能设计 |  | 0.12d | 2018-10-23 A | 2018-10-25 A |  | 100% |  | 2018-10-23 | 2018-10-23 | 0.5d |  |  | 黄彬彬; 何志城 | 1h | 1h | 65 | 260 | 65 |
| 51 | 3.2.1.3.2 | 可靠性设计 |  | 0.12d? | 2018-10-23 A | 2018-10-25 A | 50 | 100% |  | 2018-10-24 | 2018-10-24 | 0.5d? |  |  | 黄彬彬; 黄柏儒 | 1h | 1h | 65 | 260 | 65 |
| 52 | 3.2.1.3.3 | 可用性设计 |  | 0.12d? | 2018-10-23 A | 2018-10-23 A | 51 | 100% |  | 2018-10-24 | 2018-10-24 | 0.5d? |  |  | 黄彬彬 | 1h | 1h | 65 | 260 | 65 |
| 53 | 3.2.1.4 | 约束和假定 |  | 1d? | 2018-10-22 A | 2018-10-22 A | 49SS | 100% |  | 2018-10-23 | 2018-10-23 | 0.5d? |  |  | 谷明政 | 8h | 8h | 520 | 260 | 520 |
| 54 | 3.2.1.5 | 审阅概要设计 |  | 0.5d | 2018-10-25 A | 2018-10-25 A | 39, 42, 49, 53 | 100% |  | 2018-10-25 | 2018-10-25 | 1d |  |  | 谷明政 | 4h | 4h | 260 | 520 | 260 |
| 55 | 3.2.1.6 | 根据反馈修改概要设计 |  | 2d? | 2018-10-25 A | 2018-10-26 A | 54SS | 100% |  | 2018-10-25 | 2018-10-25 | 1d? |  |  | 谷明政; 何志城; 黄柏儒; 黄彬彬; 黄家豪; 谢烨斌 | 96h | 96h | 6,240 |  | 6,240 |
| 56 | 3.2.1.7 | 概要设计完成 | milestone | 1d? | 2018-10-29 A | 2018-10-29 A | 55 | 100% |  | 2018-10-26 | 2018-10-26 | 1d? |  |  |  |  |  |  |  |  |

| ID | WBS | Task | Type | Duration | Start | Finish | Predecessors | Complete | Remaining | Baseline start | Baseline finish | Baseline duration | Total slack | Free slack | Resources | Work | Actual work | Cost | Baseline cost | Actual cost |
| --- | --- | --- | --- | --- | --- | --- | --- | --- | --- | --- | --- | --- | --- | --- | --- | --- | --- | --- | --- | --- |
| 57 | 3.2.2 | **详细设计** |  | 15d? | 2018-10-21 A | 2018-11-09 | 56 | 99% | 0d? | 2018-10-29 | 2018-11-06 | 7d? | 30d |  |  | 136h | 136h | 8,840 | 6,474 | 8,840 |
| 58 | 3.2.2.1 | 制定系统编程规范约定 | manual | 1d | 2018-10-21 A | 2018-10-21 A |  | 100% |  | 2018-10-18 | 2018-10-22 | 0.5d? |  |  | 谷明政; 黄柏儒 | 8h | 8h | 520 | 260 | 520 |
| 59 | 3.2.2.2 | 审阅编程规范 |  | 1d | 2018-10-21 A | 2018-10-21 A | 58 | 100% |  | 2018-10-30 | 2018-10-30 | 0.5d? |  |  | 谷明政; 黄柏儒 | 16h | 16h | 1,040 |  | 1,040 |
| 60 | 3.2.2.3 | 根据反馈修改编程规范 | manual | 1d | 2018-10-22 A | 2018-10-22 A | 59SS | 100% |  | 2018-10-30 | 2018-10-30 | 0.5d? |  |  | 谷明政; 黄柏儒 | 16h | 16h | 1,040 |  | 1,040 |
| 61 | 3.2.2.4 | **系统复用计划** |  | 0.5d | 2018-11-06 A | 2018-11-06 A |  | 100% |  | 2018-11-04 | 2018-11-04 | 0d? |  |  |  | 8h | 8h | 520 | 1,040 | 520 |
| 62 | 3.2.2.4.1 | 前端复用计划 |  | 0.5d | 2018-11-06 A | 2018-11-06 A |  | 100% |  | 2018-11-04 | 2018-11-04 | 1d |  |  | 何志城 | 4h | 4h | 260 | 520 | 260 |
| 63 | 3.2.2.4.2 | 后台复用计划 |  | 0.5d | 2018-11-06 A | 2018-11-06 A | 62SS | 100% |  | 2018-11-04 | 2018-11-04 | 1d |  |  | 谢烨斌 | 4h | 4h | 260 | 520 | 260 |
| 64 | 3.2.2.5 | **系统接口设计** |  | 1d? | 2018-11-04 A | 2018-11-05 A |  | 100% |  | 2018-10-29 | 2018-10-29 | 1d? |  |  |  | 16h | 16h | 1,040 | 598 | 1,040 |
| 65 | 3.2.2.5.1 | 内部接口详细设计 | manual | 1d | 2018-11-04 A | 2018-11-04 A |  | 100% |  | 2018-10-29 | 2018-10-29 | 0.5d? |  |  | 谢烨斌; 谷明政; 何志城; 黄柏儒; 黄彬彬; 黄家豪 | 8h | 8h | 520 | 260 | 520 |
| 66 | 3.2.2.5.2 | 外部接口详细设计 | manual | 1d | 2018-11-05 A | 2018-11-05 A | 65 | 100% |  | 2018-10-29 | 2018-10-29 | 0.5d? |  |  | 谢烨斌; 谷明政; 何志城; 黄柏儒; 黄彬彬; 黄家豪 | 8h | 8h | 520 | 260 | 520 |
| 67 | 3.2.2.6 | **对象模型设计** |  | 3d? | 2018-10-31 A | 2018-11-03 A |  | 100% |  | 2018-10-29 | 2018-10-30 | 2d? |  |  |  | 16h | 16h | 1,040 | 1,196 | 1,040 |
| 68 | 3.2.2.6.1 | 对象模型图（类图） |  | 1d? | 2018-10-31 A | 2018-10-31 A |  | 100% |  | 2018-10-29 | 2018-10-29 | 1d? |  |  | 黄家豪 | 8h | 8h | 520 | 520 | 520 |
| 69 | 3.2.2.6.2 | 对象描述 |  | 1d | 2018-11-03 A | 2018-11-03 A | 68 | 100% |  | 2018-10-30 | 2018-10-30 | 1d? |  |  | 何志城 | 8h | 8h | 520 | 520 | 520 |
| 70 | 3.2.2.7 | **用例详细设计** |  | 2d? | 2018-11-04 A | 2018-11-06 | 69 | 99% | 0d? | 2018-10-31 | 2018-10-31 | 1d? | 1.5d | 1d |  | 36h | 36h | 2,340 | 2,080 | 2,340 |
| 71 | 3.2.2.7.1 | 系统顺序图设计 |  | 2d | 2018-11-04 A | 2018-11-06 |  | 99% | 0d | 2018-10-31 | 2018-10-31 | 1d? | 1.5d |  | 谷明政; 黄柏儒; 黄彬彬; 黄家豪 | 32h | 32h | 2,080 | 1,040 | 2,080 |
| 72 | 3.2.2.7.2 | 系统状态图设计 |  | 0.5d? | 2018-11-06 A | 2018-11-06 |  | 99% | 0d? | 2018-10-31 | 2018-10-31 | 1d? | 2d |  | 黄柏儒; 谷明政; 黄彬彬; 黄家豪 | 4h | 4h | 260 | 1,040 | 260 |
| 73 | 3.2.2.8 | 审阅详细设计 |  | 0.5d | 2018-11-08 A | 2018-11-08 | 61, 46, 67, 70 | 99% | 0d | 2018-11-05 | 2018-11-05 | 1d | 31.5d | 0d | 谢烨斌; 何志城 | 4h | 4h | 260 | 520 | 260 |
| 74 | 3.2.2.9 | 根据反馈修改详细设计 |  | 1d? | 2018-11-08 A | 2018-11-08 | 73SS | 99% | 0d? | 2018-11-05 | 2018-11-05 | 1d? | 31d |  | 谷明政; 黄柏儒; 黄彬彬; 黄家豪 | 16h | 16h | 1,040 | 520 | 1,040 |
| 75 | 3.2.2.10 | 详细设计完成 | milestone | 1d? | 2018-11-09 A | 2018-11-09 A | 74 | 100% |  | 2018-11-06 | 2018-11-06 | 1d? |  |  |  |  |  |  |  |  |
| 76 | 3.2.3 | 设计工作完成 | milestone | 0d | 2018-11-09 A | 2018-11-09 A | 75 | 100% |  | 2018-11-06 | 2018-11-06 | 0d |  |  |  |  |  |  |  |  |
| 77 | 3.3 | **开发** |  | 40d? | 2018-10-16 A | 2018-12-10 A | 18FS+2d | 100% |  | 2018-10-19 | 2018-11-12 | 16.9d? |  |  |  | 633h | 633h | 41,145 | 34,580 | 41,145 |
| 78 | 3.3.1 | 审阅需求文档 |  | 1d | 2018-10-16 A | 2018-10-16 A | 36FS+2d | 100% |  | 2018-10-19 | 2018-10-19 | 0.5d |  |  | 谢烨斌 | 8h | 8h | 520 | 260 | 520 |
| 79 | 3.3.2 | 制定开发计划 |  | 1d? | 2018-10-17 A | 2018-10-17 A | 78 | 100% |  | 2018-10-19 | 2018-10-22 | 1d? |  |  | 谢烨斌 | 8h | 8h | 520 | 520 | 520 |
| 80 | 3.3.3 | 分派任务给开发人员 |  | 0.12d | 2018-10-18 A | 2018-10-18 A | 79 | 100% |  | 2018-10-22 | 2018-10-23 | 1d |  |  | 谢烨斌 | 1h | 1h | 65 | 520 | 65 |

| ID | WBS | Task | Type | Duration | Start | Finish | Predecessors | Complete | Remaining | Baseline start | Baseline finish | Baseline duration | Total slack | Resources | Work | Actual work | Cost | Baseline cost | Actual cost |
| --- | --- | --- | --- | --- | --- | --- | --- | --- | --- | --- | --- | --- | --- | --- | --- | --- | --- | --- | --- |
| 81 | 3.3.4 | **知识学习** |  | 11d? | 2018-10-16 A | 2018-10-30 A | 80 | 100% |  | 2018-10-23 | 2018-10-30 | 5d |  |  | 216h | 216h | 14,040 | 9,880 | 14,040 |
| 82 | 3.3.4.1 | 前端知识学习 |  | 4d | 2018-10-25 A | 2018-10-30 A |  | 100% |  | 2018-10-23 | 2018-10-26 | 3d |  | 何志城; 黄柏儒; 谷明政; 谢烨斌 | 96h | 96h | 6,240 | 4,680 | 6,240 |
| 83 | 3.3.4.2 | 后端知识学习 |  | 9d | 2018-10-16 A | 2018-10-26 A | 82SS | 100% |  | 2018-10-23 | 2018-10-30 | 5d |  | 黄家豪; 黄彬彬 | 72h | 72h | 4,680 | 5,200 | 4,680 |
| 84 | 3.3.4.3 | 交流学习 |  | 1d? | 2018-10-22 A | 2018-10-23 A |  | 100% |  |  |  |  |  | 谷明政; 何志城; 黄柏儒; 黄彬彬; 黄家豪; 谢烨斌 | 48h | 48h | 3,120 |  | 3,120 |
| 85 | 3.3.5 | demo搭建 |  | 3d | 2018-11-09 A | 2018-11-13 A | 81 | 100% |  | 2018-10-30 | 2018-10-31 | 1d? |  | 黄彬彬 | 24h | 24h | 1,560 |  | 1,560 |
| 86 | 3.3.6 | **编写代码** |  | 22d? | 2018-11-06 A | 2018-12-05 A | 80FS+5d | 100% |  | 2018-10-30 | 2018-11-12 | 9d? |  |  | 128h | 128h | 8,320 | 15,600 | 8,320 |
| 87 | 3.3.6.1 | **按模块编写** |  | 22d? | 2018-11-06 A | 2018-12-05 A |  | 100% |  | 2018-10-30 | 2018-11-02 | 3d? |  |  | 88h | 88h | 5,720 | 8,320 | 5,720 |
| 88 | 3.3.6.1.1 | 主页编码 |  | 2d | 2018-11-06 A | 2018-11-07 A |  | 100% |  | 2018-10-30 | 2018-10-31 | 0.5d |  | 黄家豪 | 16h | 16h | 1,040 | 260 | 1,040 |
| 89 | 3.3.6.1.2 | 认证用户编码 |  | 1d? | 2018-11-09 A | 2018-11-10 A | 88 | 100% |  | 2018-10-31 | 2018-11-01 | 1d? |  | 黄家豪 | 8h | 8h | 520 | 520 | 520 |
| 90 | 3.3.6.1.3 | 管理小组编码 |  | 3d? | 2018-11-13 A | 2018-11-15 A | 89 | 100% |  | 2018-11-01 | 2018-11-01 | 0.5d? |  | 黄柏儒 | 24h | 24h | 1,560 | 260 | 1,560 |
| 91 | 3.3.6.1.4 | 处理聊天编码 |  | 2d? | 2018-11-29 A | 2018-12-02 A | 90 | 100% |  | 2018-11-01 | 2018-11-02 | 1d? |  | 黄彬彬 | 16h | 16h | 1,040 | 520 | 1,040 |
| 92 | 3.3.6.1.5 | 日程管理编码 |  | 3d | 2018-12-03 A | 2018-12-05 A | 88SS | 100% |  | 2018-10-30 | 2018-11-01 | 2d |  | 谷明政 | 24h | 24h | 1,560 | 1,040 | 1,560 |
| 93 | 3.3.6.2 | 数据库搭建 |  | 5d | 2018-11-18 A | 2018-11-23 A | 87SS+6d | 100% |  | 2018-11-07 | 2018-11-12 | 3d |  | 黄彬彬 | 40h | 40h | 2,600 | 1,560 | 2,600 |
| 94 | 3.3.7 | **开发人员测试(初步调试)** |  | 7d | 2018-11-30 A | 2018-12-10 A | 86SS | 100% |  | 2018-10-30 | 2018-11-09 | 8d |  |  | 248h | 248h | 16,120 | 7,800 | 16,120 |
| 95 | 3.3.7.1 | 前端代码测试 |  | 7d | 2018-11-30 A | 2018-12-10 A | 87FF | 100% |  | 2018-10-30 | 2018-11-02 | 3d |  | 何志城; 黄柏儒; 谷明政 | 168h | 168h | 10,920 | 4,680 | 10,920 |
| 96 | 3.3.7.2 | 后台代码测试 |  | 5d | 2018-12-03 A | 2018-12-09 A |  | 100% |  | 2018-11-06 | 2018-11-09 | 3d |  | 黄家豪; 谢烨斌 | 80h | 80h | 5,200 | 3,120 | 5,200 |
| 97 | 3.3.8 | 开发工作完毕 | milestone | 0d | 2018-12-09 A | 2018-12-09 A | 87, 93 | 100% |  | 2018-11-12 | 2018-11-12 | 0d |  |  |  |  |  |  |  |
| 98 | 3.4 | **测试** |  | 15d | 2018-12-01 A | 2018-12-21 | 77 | 97% | 0.43d | 2018-11-12 | 2018-11-29 | 13d | 0d |  | 1352h | 1328h | 87,880 | 27,560 | 86,320 |
| 99 | 3.4.1 | 制定单元测试计划 |  | 0.5d | 2018-12-03 A | 2018-12-03 A | 97 | 100% |  | 2018-11-12 | 2018-11-13 | 1d |  | 黄家豪 | 4h | 4h | 260 | 520 | 260 |
| 100 | 3.4.2 | 制定整体测试计划 |  | 0.5d | 2018-12-03 A | 2018-12-03 A | 99 | 100% |  | 2018-11-13 | 2018-11-14 | 1d |  | 黄家豪 | 4h | 4h | 260 | 520 | 260 |
| 101 | 3.4.3 | **单元测试** |  | 12d | 2018-12-01 A | 2018-12-18 A | 99FS+2d | 100% |  | 2018-11-15 | 2018-11-23 | 6d |  |  | 1072h | 1072h | 69,680 | 16,640 | 69,680 |
| 102 | 3.4.3.1 | **审阅模块化代码** |  | 11d | 2018-12-01 A | 2018-12-17 A |  | 100% |  | 2018-11-15 | 2018-11-20 | 3d |  |  | 160h | 160h | 10,400 | 3,120 | 10,400 |
| 103 | 3.4.3.1.1 | 审阅前端代码 |  | 10d | 2018-12-03 A | 2018-12-17 A |  | 100% |  | 2018-11-15 | 2018-11-20 | 3d |  | 何志城 | 80h | 80h | 5,200 | 1,560 | 5,200 |
| 104 | 3.4.3.1.2 | 审阅后台代码 |  | 10d | 2018-12-01 A | 2018-12-17 A | 103SS | 100% |  | 2018-11-15 | 2018-11-20 | 3d |  | 黄柏儒 | 80h | 80h | 5,200 | 1,560 | 5,200 |
| 105 | 3.4.3.2 | 测试组件模块是否符合产品规范 |  | 10d | 2018-12-03 A | 2018-12-17 A | 102SS | 100% |  | 2018-11-15 | 2018-11-21 | 4d |  | 谷明政; 何志城 | 160h | 160h | 10,400 | 4,160 | 10,400 |
| 106 | 3.4.3.3 | 找出不符合规范的异常情况 |  | 10d | 2018-12-03 A | 2018-12-17 A | 105SS | 100% |  | 2018-11-15 | 2018-11-21 | 4d |  | 谷明政; 黄柏儒 | 160h | 160h | 10,400 | 4,160 | 10,400 |
| 107 | 3.4.3.4 | 修改代码 |  | 10d | 2018-12-03 A | 2018-12-17 A | 106FF | 100% |  | 2018-11-16 | 2018-11-21 | 3d |  | 谷明政; 何志城; 黄柏儒; 黄彬彬; 黄家豪; 谢烨斌 | 480h | 480h | 31,200 | 3,120 | 31,200 |
| 108 | 3.4.3.5 | 重新测试经过修改的代码 |  | 5d | 2018-12-06 A | 2018-12-18 A | 107 | 100% |  | 2018-11-21 | 2018-11-23 | 2d |  | 何志城; 黄柏儒; 黄彬彬; 谷明政; 黄家豪; 谢烨斌 | 112h | 112h | 7,280 | 2,080 | 7,280 |
| 109 | 3.4.3.6 | 单元测试完成 | milestone | 1d | 2018-12-10 A | 2018-12-10 A | 108 | 100% |  | 2018-11-23 | 2018-11-23 | 0d |  |  |  |  |  |  |  |

| ID | WBS | Task | Type | Duration | Start | Finish | Predecessors | Complete | Remaining | Baseline start | Baseline finish | Baseline duration | Total slack | Constraint | Resources | Work | Actual work | Cost | Baseline cost | Actual cost |
| --- | --- | --- | --- | --- | --- | --- | --- | --- | --- | --- | --- | --- | --- | --- | --- | --- | --- | --- | --- | --- |
| 110 | 3.4.4 | **整体测试** |  | 10d | 2018-12-10 A | 2018-12-21 | 101 | 85% | 1.54d | 2018-11-23 | 2018-11-29 | 4d |  |  |  | 272h | 248h | 17,680 | 9,880 | 16,120 |
| 111 | 3.4.4.1 | 测试模块集成情况 |  | 5d | 2018-12-10 A | 2018-12-14 A |  | 100% |  | 2018-11-23 | 2018-11-27 | 2d |  |  | 黄柏儒; 黄彬彬; 何志城 | 80h | 80h | 5,200 | 2,080 | 5,200 |
| 112 | 3.4.4.2 | 找出不符合规范的异常情况 |  | 5d | 2018-12-10 A | 2018-12-14 A | 111SS | 100% |  | 2018-11-23 | 2018-11-28 | 3d |  |  | 何志城; 黄柏儒; 黄彬彬 | 120h | 120h | 7,800 | 3,120 | 7,800 |
| 113 | 3.4.4.3 | 修改代码 |  | 1d | 2018-12-11 A | 2018-12-11 A | 112FF | 100% |  | 2018-11-23 | 2018-11-28 | 3d |  |  | 谷明政; 何志城; 黄柏儒; 黄彬彬; 黄家豪; 谢烨斌 | 48h | 48h | 3,120 | 3,120 | 3,120 |
| 114 | 3.4.4.4 | 重新测试经过修改的代码 |  | 1d | 2018-12-11 A | 2018-12-19 | 113 |  | 1d | 2018-11-28 | 2018-11-29 | 1d | 0d | finish no earlier than 2018-12-18 | 何志城; 黄柏儒; 黄彬彬 | 24h |  | 1,560 | 1,560 |  |
| 115 | 3.4.4.5 | 整体测试完成 |  | 1d | 2018-12-15 A | 2018-12-20 | 114 |  | 1d | 2018-11-29 | 2018-11-29 | 0d | 1d |  |  |  |  |  |  |  |
| 116 | 3.5 | **试生产** |  | 15.5d? | 2018-11-26 A | 2018-12-17 A | 97 | 100% |  | 2018-11-12 | 2018-11-30 | 14d? |  |  |  | 20h | 20h | 1,300 | 780 | 1,300 |
| 117 | 3.5.1 | 确定测试群体 |  | 1d | 2018-11-26 A | 2018-11-26 A | 97 | 100% |  | 2018-11-12 | 2018-11-13 | 0.5d |  |  | 谷明政 | 8h | 8h | 520 | 260 | 520 |
| 118 | 3.5.2 | 获得用户反馈 |  | 8h? | 2018-12-14 A | 2018-12-15 A | 117, 115 | 100% |  | 2018-11-29 | 2018-11-30 | 4h? |  |  | 谷明政 | 8h | 8h | 520 | 260 | 520 |
| 119 | 3.5.3 | 评估测试信息 |  | 0.5d | 2018-12-15 A | 2018-12-17 A | 118 | 100% |  | 2018-11-30 | 2018-11-30 | 0.5d |  |  | 何志城 | 4h | 4h | 260 | 260 | 260 |
| 120 | 3.5.4 | 试生产工作完成 | milestone | 0d | 2018-12-16 A | 2018-12-16 A | 119 | 100% |  | 2018-11-30 | 2018-11-30 | 0d |  |  |  |  |  |  |  |  |
| 121 | 3.6 | **部署** |  | 36d | 2018-10-26 A | 2018-12-15 A | 80 | 100% |  | 2018-10-23 | 2018-11-15 | 17d |  |  |  | 88h | 88h | 5,720 | 4,160 | 5,720 |
| 122 | 3.6.1 | 确定部署策略 |  | 1d | 2018-10-26 A | 2018-10-28 A | 80 | 100% |  | 2018-10-23 | 2018-10-24 | 1d |  |  | 黄彬彬 | 8h | 8h | 520 | 520 | 520 |
| 123 | 3.6.2 | 确定部署方法 |  | 2d | 2018-10-31 A | 2018-11-01 A | 122 | 100% |  | 2018-10-24 | 2018-10-25 | 1d |  |  | 谢烨斌 | 16h | 16h | 1,040 | 520 | 1,040 |
| 124 | 3.6.3 | 获得部署所需资源 |  | 1d | 2018-11-08 A | 2018-11-08 A | 123FS+2d | 100% |  | 2018-10-29 | 2018-10-30 | 1d |  |  | 黄彬彬 | 8h | 8h | 520 | 520 | 520 |
| 125 | 3.6.4 | 培训技术支持人员 |  | 2d | 2018-11-16 A | 2018-11-19 A | 124FS+5d | 100% |  | 2018-11-06 | 2018-11-08 | 2d |  |  | 黄彬彬 | 16h | 16h | 1,040 | 1,040 | 1,040 |
| 126 | 3.6.5 | 部署软件 |  | 5d | 2018-12-10 A | 2018-12-15 A | 125FS+2d | 100% |  | 2018-11-12 | 2018-11-15 | 3d |  |  | 黄彬彬 | 40h | 40h | 2,600 | 1,560 | 2,600 |
| 127 | 3.6.6 | 部署工作完成 | milestone | 0d | 2018-12-15 A | 2018-12-15 A | 126 | 100% |  | 2018-11-15 | 2018-11-15 | 0d |  |  |  |  |  |  |  |  |
| 128 | 4 | **监控** |  | 45.25d? | 2018-09-27 A | 2018-11-29 A | 1SS | 100% |  | 2018-09-27 | 2018-12-04 | 49d? |  |  |  | 51h | 51h | 3,315 | 5,135 | 3,315 |
| 129 | 4.1 | 周会 | manual | 1.5h | 2018-09-27 A | 2018-09-27 A |  | 100% |  | 2018-09-27 | 2018-09-27 | 2h |  |  | 黄家豪; 谢烨斌; 黄彬彬; 何志城; 黄柏儒; 谷明政 | 9h | 9h | 585 | 780 | 585 |
| 130 | 4.2 | 周会 | manual | 1h | 2018-11-01 A | 2018-11-01 A |  | 100% |  | 2018-11-01 | 2018-11-01 | 2h |  |  | 黄家豪; 谢烨斌; 黄彬彬; 何志城; 黄柏儒; 谷明政 | 6h | 6h | 390 | 780 | 390 |
| 131 | 4.3 | 周会 | manual | 1h | 2018-11-08 A | 2018-11-08 A |  | 100% |  | 2018-11-08 | 2018-11-08 | 2h |  |  | 黄家豪; 谢烨斌; 黄彬彬; 何志城; 黄柏儒; 谷明政 | 6h | 6h | 390 | 780 | 390 |
| 132 | 4.4 | 周会 |  | 1h | 2018-11-15 A | 2018-11-15 A |  | 100% |  | 2018-11-15 | 2018-11-15 | 2h |  |  | 黄家豪; 谢烨斌; 黄彬彬; 何志城; 黄柏儒; 谷明政 | 6h | 6h | 390 |  | 390 |
| 133 | 4.5 | 周会 | manual | 0.25d | 2018-11-22 A | 2018-11-22 A |  | 100% |  | 2018-11-22 | 2018-11-22 | 1d? |  |  | 谷明政; 何志城; 黄柏儒; 黄彬彬; 黄家豪; 谢烨斌 | 12h | 12h | 780 |  | 780 |
| 134 | 4.6 | 周会 | manual | 0.25d | 2018-11-29 A | 2018-11-29 A |  | 100% |  | 2018-11-29 | 2018-11-29 | 1d? |  |  | 谷明政; 何志城; 黄柏儒; 黄彬彬; 黄家豪; 谢烨斌 | 12h | 12h | 780 |  | 780 |

| ID | WBS | Task | Type | Duration | Start | Finish | Predecessors | Complete | Actual finish | Baseline start | Baseline finish | Baseline duration | Resources | Work | Actual work | Cost | Baseline cost | Actual cost |
| --- | --- | --- | --- | --- | --- | --- | --- | --- | --- | --- | --- | --- | --- | --- | --- | --- | --- | --- |
| 135 | 5 | **收尾** |  | 16d | 2018-11-27 A | 2018-12-18 | 17FS-12d | 100% | 2018-12-17 | 2018-11-12 | 2018-12-05 | 16.5d? |  | 44h | 44h | 2,860 | 5,460 | 2,860 |
| 136 | 5.1 | **文档整理** |  | 14.5d? | 2018-11-27 A | 2018-12-17 A | 116FS-12d | 100% |  | 2018-11-12 | 2018-11-28 | 12d? |  | 40h | 40h | 2,600 | 4,680 | 2,600 |
| 137 | 5.1.1 | 制定文档整理计划 |  | 0.5d? | 2018-11-27 A | 2018-11-27 A | 120 | 100% |  | 2018-11-12 | 2018-11-13 | 0.5d? | 谷明政 | 4h | 4h | 260 | 260 | 260 |
| 138 | 5.1.2 | 制定用户手册规范 |  | 1d? | 2018-12-11 A | 2018-12-11 A |  | 100% |  | 2018-11-22 | 2018-11-23 | 0.5d? | 谷明政 | 8h | 8h | 520 | 260 | 520 |
| 139 | 5.1.3 | 编写用户手册 |  | 1d | 2018-12-14 A | 2018-12-15 A | 138 | 100% |  | 2018-11-23 | 2018-11-26 | 1d | 黄柏儒 | 8h | 8h | 520 | 520 | 520 |
| 140 | 5.1.4 | 审阅所有的用户文档 |  | 2d? | 2018-12-13 A | 2018-12-15 A | 139 | 100% |  | 2018-11-26 | 2018-11-26 | 0.5d? | 谷明政 | 16h | 16h | 1,040 | 260 | 1,040 |
| 141 | 5.1.5 | 根据反馈修改用户文档 |  | 0.5d? | 2018-12-16 A | 2018-12-17 A | 140 | 100% |  | 2018-11-26 | 2018-11-27 | 1d? | 黄柏儒 | 4h | 4h | 260 | 520 | 260 |
| 142 | 5.1.6 | 文档整理完成 | milestone | 0d? | 2018-12-17 A | 2018-12-17 A | 141 | 100% |  | 2018-11-27 | 2018-11-28 | 1d? |  |  |  |  |  |  |
| 143 | 5.2 | **总结经验** |  | 0.5d? | 2018-12-16 A | 2018-12-17 A | 136 | 100% |  | 2018-11-30 | 2018-12-05 | 2.5d? |  | 4h | 4h | 260 | 780 | 260 |
| 144 | 5.2.1 | 记录经验 |  | 0.5d? | 2018-12-16 A | 2018-12-17 A | 142 | 100% |  | 2018-11-30 | 2018-12-03 | 1d? | 谷明政 | 4h | 4h | 260 | 520 | 260 |
